id,name,phase,start_day,finish_day
3,CARTEL DE IDENTIFICACION DE OBRA DE 3.60 X 4.80M,OBRAS PROVISIONALES,0,1
71,PROGRAMA DE MANEJO DE RESIDUOS SOLIDOS,MITIGACION AMBIENTAL,0,40
72,PLAN DE CONTINGENCIAS,MITIGACION AMBIENTAL,0,1
73,MEDIDAS DE MITIGACION,MITIGACION AMBIENTAL,0,40
4,CASETA PARA  ALMACEN Y OFICINA,OBRAS PROVISIONALES,1,3
10,CAPACITACION EN SEGURIDAD Y SALUD,SEGURIDAD Y SALUD EN EL TRABAJO,3,4
11,RECURSOS PARA RESPUESTAS ANTE EMERGENCIAS EN SEGURIDAD Y SALUD DURANTE EL TRABAJO,SEGURIDAD Y SALUD EN EL TRABAJO,3,4
65,"PLAN DE VIGILANCIA, PREVENCION Y CONTROL COVID-19","ELABORACION, IMPLEMENTACION Y ADMINISTRACION DEL PLAN DE VIGILANCIA, PREVENCION Y CONTROL COVID-19",3,4
7,EQUIPOS DE PROTESSION INDIVIDUAL,SEGURIDAD Y SALUD EN EL TRABAJO,3,43
76,PLAN DE MONITOREO ARQUEOLOGICO,OTROS,3,5
8,EQUIPOS DE PROTESSION COLECTIVA,SEGURIDAD Y SALUD EN EL TRABAJO,3,43
9,"SEÑALIZACIONES, DESVIO DE TRANSITO Y PROTESSION DE OBRA",SEGURIDAD Y SALUD EN EL TRABAJO,3,43
17,MOVILIZACIÓN Y DESMOVILIZACIÓN DE EQUIPO,TRABAJO PRELIMINARES,4,6
5,ENERGIA ELECTRICA,OBRAS PROVISIONALES,5,43
13,LIMPIEZA DE OBRA,TRABAJO PRELIMINARES,6,7
14,TRAZO NIVELACIÓN Y REPLANTEO,TRABAJO PRELIMINARES,7,8
15,DEMOLICION DE VEREDAS,TRABAJO PRELIMINARES,8,10
16,ELIMINACIÓN DEMATERIAL EXCEDENTE DE  DEMOLICIONES Dp=2.5Km,TRABAJO PRELIMINARES,10,11
19,EXCAVACION DE MATERIAL SUELTO CON MAQUINARIA,MOVIMIENTO DE TIERRAS,11,15
20,PERFILADO Y COMPACTACIÓN DE SUBRAZANTE C/EQUIPO,MOVIMIENTO DE TIERRAS,15,17
68,"PROTESSION DEL PERSONAL DE OBRA, CONTROLES DE MEDICION DE TEMPERATURA, ETC",FASES DE INICIO,15,54
69,"DESINFESSION DEL PERSONAL, MATERIALES, HERRAMIENTAS Y AMBIENTES DE LA OBRA",FASES DE INICIO,15,54
21,ELIMINACIÓN DEMATERIAL EXCEDENTE DEL CORTE Dp=2.5Km,MOVIMIENTO DE TIERRAS,17,20
23,"MEJORAMIENTO DE LA SUB-RASANTE CON OVER TAM. MAX. 8"" e=30","PAVIMENTACION DE CARPETA ASFALTICA E=2""",17,19
31,TRAZO NIVELACIÓN Y REPLANTEO,TRABAJO PRELIMINARES,18,20
24,CAPA ANTICONTAMINANTE (Arenilla) E=0.10 m,"PAVIMENTACION DE CARPETA ASFALTICA E=2""",19,20
46,TRAZO NIVELACION  Y REPLANTEO,TRABAJO PRELIMINARES,20,30
79,NIVELACION DE TAPAS DE BUZONES,OTROS,20,25
33,CORTE MANUAL EN TERRENO HASTA SUBRASANTE EN VEREDA,MOVIMIENTO DE TIERRAS,23,38
25,SUB-BASE GRANULAR (afirmado 3'') e=0.20 m,"PAVIMENTACION DE CARPETA ASFALTICA E=2""",25,28
34,NIVELACION Y COMPACTACION DE SUBRASANTE CON EQUIPO LIVIANO,MOVIMIENTO DE TIERRAS,27,32
26,Base Granular e= 20 cm,"PAVIMENTACION DE CARPETA ASFALTICA E=2""",28,32
48,EXCAVACIÓN DE ZANJA PARA SARDINEL,MOVIMIENTO DE TIERRAS,29,33
27,Imprimación Asfáltica,"PAVIMENTACION DE CARPETA ASFALTICA E=2""",32,33
35,RELLENO   CON AFIRMADO,MOVIMIENTO DE TIERRAS,32,36
59,TRAZO NIVELACIÓN Y REPLANTEO,AREAS VERDES,32,34
28,"CARPETA ASFALTICA EN CALIENTE DE 2""","PAVIMENTACION DE CARPETA ASFALTICA E=2""",33,34
49,ELIMINACION DE MATERIAL EXCEDENTE,MOVIMIENTO DE TIERRAS,33,35
56,SEÑALIZACION HORIZONTAL,SEÑALIZACION VIAL,34,35
57,SEÑALIZACION VERTICAL,SEÑALIZACION VIAL,34,36
50,ENCOFRADO Y DESENCOFRADO,MOVIMIENTO DE TIERRAS,35,38
36,ELIMINACIÓN DEMATERIAL EXCEDENTE DEL CORTE Dp=2.5Km,MOVIMIENTO DE TIERRAS,37,38
75,LIMPIEZA FINAL DE OBRA,OTROS,38,40
38,CONCRETO DE FS=175 kg/cm2,VEREDAS,40,42
39,ENCOFRADO Y DESENCOFRADO,VEREDAS,42,46
51,CONCRETO EN SARDINELES PERALTADO F'C=175 KG/CM2,MOVIMIENTO DE TIERRAS,42,44
60,EXCAVACION MANUAL EN AREAS VERDES,AREAS VERDES,43,48
52,CURADO DE CONCRETO CON ADITIVO EN SARDINELES,MOVIMIENTO DE TIERRAS,44,45
77,REPOSICION DE CAJAS DE AGUA (INC. TAPAS),OTROS,44,49
53,JUNTAS,MOVIMIENTO DE TIERRAS,45,46
40,JUNTAS,VEREDAS,46,47
54,PINTADO DE SARDINELES,MOVIMIENTO DE TIERRAS,46,49
41,"RAMPA DE CONRETO 140 kg/cm² e=4"" BRUÑADO S/DISEÑO",VEREDAS,47,48
42,CURADO DE CONCRETO CON ADITIVO EN VEREDAS Y RAMPAS,VEREDAS,47,48
43,PINTADO DE VEREDAS,VEREDAS,48,51
61,ELIMINACIÓN DEMATERIAL EXCEDENTE DEL CORTE Dp=2.5Km,AREAS VERDES,48,49
62,"SEMBRADO DE GRASS, INCLUYE PREPARACION DEL TERRENO",AREAS VERDES,49,53
78,REPOSICION DE CAJAS DE DESAGUE (INC. TAPAS),OTROS,49,53
