id,name,phase,start_day,finish_day
13,EQUIPOS DE PROTESSION COLECTIVO,SEGURIDAD EN OBRA,0,60
14,SEÑALIZACION TEMPORAL DE SEGURIDAD,SEGURIDAD EN OBRA,0,60
15,CAPACITACION EN SEGURIDAD Y SALUD,SEGURIDAD EN OBRA,0,60
17,LIMPIEZA Y DESINFESSION DEL PERSONAL,"PLAN DE VIGILANCIA, PREVENCION Y CONTROL DE COVID 19",0,60
31,CANALETA EVAC AGUAS PLUVIALES C/ PLANCHA ACERO GALV. TIPO CALAMAINA,COMPONENTES METALICOS,0,3
5,LIMPIEZA DE TERRENO,OBRAS PRELIMINARES,0,2
6,TRAZADO Y REPLANTEO,OBRAS PRELIMINARES,2,4
64,TRANSPORTE,TRANSPORTE,2,3
66,INSTALACION,INSTALACION,2,3
68,OTROS,OTROS,2,3
32,BARANDA DE METAL,COMPONENTES METALICOS,3,5
7,EXCAVACIONES,OBRAS PRELIMINARES,4,9
12,EQUIPOS DE PROTESSION PERSONAL,SEGURIDAD EN OBRA,5,65
8,RELLENO CON MATERIAL PRESTAMO,OBRAS PRELIMINARES,9,11
9,NIVELADO Y COMPACTADO,OBRAS PRELIMINARES,11,13
21,CONCRETO SIMPLE PARA SOLADO h=10cm,ESTRUCTURAS DE CONCRETO,13,14
22,LOSA DE CONCRETO F'c=175kg/cm2,ESTRUCTURAS DE CONCRETO,14,16
23,CONCRETO PARA UÑA DE LOSA,ESTRUCTURAS DE CONCRETO,16,18
24,RAMPA Y DESCANZO DE CONCRETO,ESTRUCTURAS DE CONCRETO,18,20
18,"LIMPIEZA Y DESINFESSION DE AMBIENTES, EQUIPOS Y HERRAMIENTAS","PLAN DE VIGILANCIA, PREVENCION Y CONTROL DE COVID 19",20,80
25,CONCRETO EN COLUMNETAS,ESTRUCTURAS DE CONCRETO,20,22
26,MAMPOSTERIA DE LADRILLO,ESTRUCTURAS DE CONCRETO,22,24
30,CARTELAS PARA CONESSION,COMPONENTES METALICOS,24,36
34,POSTES 4'' x 4'',ESTRUCTURAS DE MADERA,24,28
35,MURO PANEL CIEGO 2.98x2.40,ESTRUCTURAS DE MADERA,28,32
36,MURO PANEL VENTANA 2.46x2.40,ESTRUCTURAS DE MADERA,32,36
50,SALIDA PARA TOMACORRIENTE,INSTALACIONES ELECTRICAS,32,33
51,TUBERIA 3/4 PARA ACOMETIDA,INSTALACIONES ELECTRICAS,32,34
28,ESTRUCTURA DE ACERO LONGITUDINAL 1/2'',COMPONENTES METALICOS,36,37
29,ESTRUCTURA DE ACERO VERTICAL 1/2'' ESPARRAGO,COMPONENTES METALICOS,36,38
37,MURO PANEL PUERTA 2.51x2.40,ESTRUCTURAS DE MADERA,36,40
46,VENTANAS (VIDRIO 6mm),COMPONENTES Y ACABADO,36,37
38,VIGAS 4'' x 2.5'',ESTRUCTURAS DE MADERA,40,45
47,PUERTA APANELADA,COMPONENTES Y ACABADO,40,42
39,VIGUETAS 2'' x 4'',ESTRUCTURAS DE MADERA,45,48
40,ENTABLADO DE TECHO,ESTRUCTURAS DE MADERA,48,52
45,RECUBRIMIENTO ALUZINC TR4 OPACO,COMPONENTES Y ACABADO,48,50
41,BARNIZ 2 MANOS,ESTRUCTURAS DE MADERA,52,60
49,CENTRO DE LUZ,INSTALACIONES ELECTRICAS,52,53
52,INTERRUPTORES,INSTALACIONES ELECTRICAS,53,55
53,LUMINARIAS,INSTALACIONES ELECTRICAS,53,55
54,TABLERO ELECTRICO,INSTALACIONES ELECTRICAS,53,55
55,POZO TIERRA (INCLUYE MANO DE OBRA),INSTALACIONES ELECTRICAS,53,55
43,PISO DE CERAMICA Y/O PORCELANATO EN SALON,COMPONENTES Y ACABADO,55,59
44,CONTRAZOCALO h=30cm,COMPONENTES Y ACABADO,55,57
57,MESA RECTANGULAR,MOBILIARIO,55,56
58,SILLAS,MOBILIARIO,55,56
59,ESCRITORIO,MOBILIARIO,55,56
62,EXTINTOR DE INCENDIOS,MOBILIARIO,55,56
60,ESTANTES,MOBILIARIO,56,57
69,LOGOTIPO  - GERENCIA SUB REGIONAL CHOTA,OTROS,56,57
61,PIZARRA 2.4mx1.20m,MOBILIARIO,57,58
